# Pfizer Continuum Project Plan

Schedule from MS Project, 2012-12-03 to 2014-01-16, A marks actual dates.

## Calendars

- Standard: Mon-Fri 08:00-12:00, 13:00-17:00; Sat-Sun off.

## Resources

| Resource |
| --- |
| Bala |
| Smita |
| Nelli |
| Paula |
| Hugh |
| Steve Matyas |
| Todd |
| Steve L |
| Sohal |
| Harsha |
| Naveen |
| BDA Team |
| Systems Team |
| QA3 |
| QA4 |
| QA5 |
| Vrushali |
| Max |
| VCDE |
| Anu |
| rushali |
| CTEP |
| caXchange |
| C3PR |
| caAERS |
| PSC |
| LV |
| BDA |
| "C3PR |
| Documentation |
| caGrid |
| QA |
| BAM |
| Edmond |
| NCI |
| SAIC-F |
| Web Team |
| Bill Dyer |
| CCTS Team |
| John S |
| Patrick |
| Architects |
| Christo |
| John |
| Rhett |
| Nellie |
| Steve |
| Kalpesh |
| David L |
| Stevel L |
| Kumar C |
| Gia |
| Wendy |
| Raj |
| Steve M |
| Lauren |
| Systems |
| CTRO |
| Hannes |
| SMEs |
| Gisele |
| Joe |
| CTRP Dev team |
| CBIIT |
| All |
| Analysts |
| TBD |
| Charles |
| ESST |
| Developers |
| Lisa |
| Christophe |
| Krishna |
| QA1 |
| QA2 |
| David |
| Security |
| Arch |
| Tech Leads |
| Paula B |
| Kalpana |
| KK |
| Abe |
| Kim |
| Vijay |
| CAT |
| George |
| Larry |
| Michael O |
| Resource 1 |
| Resource 2 |
| Resource3 |
| Resource 4 |
| Resource 5 |
| Gisele S |
| Dianne R |
| HR |
| NA |
| SL |
| ScenPro |
| 5AM |
| TP |
| EM |
| KE |
| JM |
| DL |
| Paul |
| Michael |
| Eilis |
| Team |
| Dev team |
| Ram P |
| NIH 508 team |
| Bryan |
| Bill D |
| Marina |
| Ye |
| Rashmi |
| Ann Wiley |
| Henry |
| QA* |
| Systems* |
| Shine |
| System |
| be |
| Jill |
| Mike |
| GQR |
| GS |
| GPM |
| TPM |
| Sichen |

## Schedule

| ID | WBS | Task | Duration | Start | Finish | Predecessors | Complete | Remaining | Total slack | Free slack | Constraint | Resources | Work | Actual work |
| --- | --- | --- | --- | --- | --- | --- | --- | --- | --- | --- | --- | --- | --- | --- |
| 1 | 1 | **caIntegrator** | 250d? | 2012-12-03 A | 2013-11-15 |  | 64% | 90.29d? | 44d |  | start no earlier than 2012-12-03 |  | 3416h | 2194h |
| 2 | 1.1 | **caIntegrator 1.4.01 - patch release** | 15d | 2013-01-02 | 2013-01-22 |  |  |  | 34d |  |  |  | 120h |  |
| 3 | 1.1.1 | Appscan on QA | 6d | 2013-01-02 | 2013-01-09 |  |  |  | 6d | 0d | start no earlier than 2013-01-02 | Systems* | 48h |  |
| 4 | 1.1.2 | Appscan on Stage | 4d | 2013-01-10 | 2013-01-15 | 3 |  |  | 6d | 0d | start no earlier than 2012-12-05 | Systems* | 32h |  |
| 5 | 1.1.3 | QA reports and Approval | 2d | 2013-01-16 | 2013-01-17 | 4 |  |  | 6d | 0d |  | QA* | 16h |  |
| 6 | 1.1.4 | Prod Release | 3d | 2013-01-18 | 2013-01-22 | 5 |  |  | 6d | 0d |  | Systems* | 24h |  |
| 7 | 1.2 | **caIntegrator 1.4.1** | 211d? | 2012-12-06 A | 2013-09-26 |  | 94% | 13.37d? | 80d |  |  |  | 1720h | 1600h |
| 8 | 1.2.1 | MILESTONE: PROJECT KICKOFF | 1d | 2012-12-06 A | 2012-12-06 A |  | 100% |  |  |  | start no earlier than 2012-12-06 |  |  |  |
| 9 | 1.2.2 | EPLC Project Management Plan | 3d | 2013-01-02 A | 2013-01-04 A |  | 100% |  |  |  | start no earlier than 2013-01-02 | Shine | 24h | 24h |
| 10 | 1.2.3 | Github Access | 2d | 2013-01-07 A | 2013-01-08 A |  | 100% |  |  |  | start no earlier than 2013-01-07 |  |  |  |
| 11 | 1.2.4 | USCF JBOSS issues | 2d | 2013-01-07 A | 2013-01-08 A |  | 100% |  |  |  | start no earlier than 2013-01-07 | Abe | 16h | 16h |
| 12 | 1.2.5 | UCSF Support (Role Based Permission) | 1d | 2013-01-25 A | 2013-01-25 A | 11 | 100% |  |  |  |  | Abe | 8h | 8h |
| 13 | 1.2.6 | **OSDI / Build Changes** | 19d? | 2013-01-09 A | 2013-02-04 A | 12 | 100% |  |  |  |  | Abe | 208h | 208h |
| 14 | 1.2.6.1 | Local copy to github, split s/w and documentation, license/copyright | 3d? | 2013-01-09 A | 2013-01-11 A |  | 100% |  |  |  | start no earlier than 2013-01-09 | Abe | 24h | 24h |
| 15 | 1.2.6.2 | Code Changes | 4d | 2013-01-22 A | 2013-01-25 A |  | 100% |  |  |  | start no earlier than 2013-01-22 | Abe | 32h | 32h |
| 16 | 1.2.6.3 | OSDI Phase 1 - complete (Pending AntHill Pro Deployment) | 6d | 2013-01-28 A | 2013-02-04 A | 15 | 100% |  |  |  |  | Abe | 48h | 48h |
| 17 | 1.2.7 | 508 Compliance on Dev (100%) | 3d | 2013-02-05 A | 2013-02-07 A | 13 | 100% |  |  |  |  | Abe | 24h | 24h |
| 18 | 1.2.8 | UCSF Support | 2d | 2013-02-08 A | 2013-02-11 A | 17 | 100% |  |  |  |  | Abe | 16h | 16h |
| 19 | 1.2.9 | Fix Appscan Issues | 10d | 2013-02-08 A | 2013-02-21 A | 18 | 100% |  |  |  |  | Abe | 80h | 80h |
| 20 | 1.2.10 | 508 compliance work | 4d | 2013-02-22 A | 2013-02-27 A | 19 | 100% |  |  |  |  | Abe | 32h | 32h |
| 21 | 1.2.11 | caBIO replacement changes | 20d | 2013-02-28 A | 2013-03-27 A | 20 | 100% |  |  |  |  | Abe | 160h | 160h |
| 22 | 1.2.12 | Documentation Changes (Context Sensitive links) | 2d | 2013-03-28 A | 2013-03-29 A | 21 | 100% |  |  |  |  | Abe | 16h | 16h |
| 23 | 1.2.13 | caBIO changes - for pathway search | 5d | 2013-04-01 A | 2013-04-05 A | 22 | 100% |  |  |  |  | Abe | 40h | 40h |
| 24 | 1.2.14 | Bug fixes and other improvements | 10d | 2013-04-01 A | 2013-04-12 A | 23 | 100% |  |  |  |  | Abe | 80h | 80h |
| 25 | 1.2.15 | AntHill Pro setup | 2d | 2013-04-15 A | 2013-04-16 A | 24 | 100% |  |  |  |  | System | 16h | 16h |
| 26 | 1.2.16 | 508 Compliance Test | 4d | 2013-02-22 A | 2013-04-17 A | 25 | 100% |  |  |  |  | Abe | 32h | 32h |
| 27 | 1.2.17 | Final test and Deployment on Dev (Anthill Pro) | 4d | 2013-04-03 A | 2013-04-09 A | 26 | 100% |  |  |  |  | Abe | 32h | 32h |
| 28 | 1.2.18 | Appscan on Dev | 6d | 2013-04-15 A | 2013-04-22 A | 24 | 100% |  |  |  | start no earlier than 2013-02-15 | System | 48h | 48h |
| 29 | 1.2.19 | Tag for QA | 2d | 2013-04-23 A | 2013-04-24 A | 28 | 100% |  |  |  |  | Abe | 16h | 16h |
| 30 | 1.2.20 | Documentation Changes | 3d | 2013-04-25 A | 2013-04-29 A | 29 | 100% |  |  |  |  | Jill | 24h | 24h |
| 31 | 1.2.21 | Wait for QA Team Availability | 10d | 2013-04-30 A | 2013-05-13 A | 30 | 100% |  |  |  |  |  |  |  |

| ID | WBS | Task | Type | Duration | Start | Finish | Predecessors | Complete | Remaining | Total slack | Constraint | Resources | Work | Actual work |
| --- | --- | --- | --- | --- | --- | --- | --- | --- | --- | --- | --- | --- | --- | --- |
| 32 | 1.2.22 | **QA Tier** |  | 90d? | 2013-05-14 A | 2013-09-16 | 31 | 98% | 1.99d? | 88d |  |  | 744h | 712h |
| 33 | 1.2.22.1 | Regression Testing on QA tier |  | 20d | 2013-05-14 A | 2013-06-10 A |  | 100% |  |  |  | QA* | 160h | 160h |
| 34 | 1.2.22.2 | Installer Testing |  | 4d | 2013-06-11 A | 2013-06-14 A | 33 | 100% |  |  |  | QA* | 32h | 32h |
| 35 | 1.2.22.3 | Section 508 testing on QA tier |  | 2d | 2013-06-17 A | 2013-06-18 A | 34 | 100% |  |  |  | QA* | 16h | 16h |
| 36 | 1.2.22.4 | Appscan on QA tier |  | 5d | 2013-06-17 A | 2013-06-21 A | 34 | 100% |  |  |  | Systems* | 40h | 40h |
| 37 | 1.2.22.5 | **Struts patch** |  | 38d? | 2013-07-18 A | 2013-09-09 A | 36 | 100% |  |  |  |  | 432h | 432h |
| 38 | 1.2.22.5.1 | Upgrade to Struts 2.3.15.1 and fix anything that breaks |  | 2d | 2013-07-18 A | 2013-07-19 A |  | 100% |  |  | start no earlier than 2013-07-18 | Abe | 16h | 16h |
| 39 | 1.2.22.5.2 | Obtain permission to deploy to QA Tier | milestone | 0d | 2013-07-19 A | 2013-07-19 A | 38 | 100% |  |  |  | Mike |  |  |
| 40 | 1.2.22.5.3 | Deploy to the QA Tier |  | 1d? | 2013-07-22 A | 2013-07-22 A | 39 | 100% |  |  |  | Marina | 8h | 8h |
| 41 | 1.2.22.5.4 | Smoke test |  | 3d | 2013-07-31 A | 2013-08-02 A | 40 | 100% |  |  | start no earlier than 2013-07-31 | Marina | 24h | 24h |
| 42 | 1.2.22.5.5 | Run Section 508 scan and manage issues |  | 1d? | 2013-07-26 A | 2013-07-26 A | 41 | 100% |  |  |  | Mike | 8h | 8h |
| 43 | 1.2.22.5.6 | Run security appscan |  | 6d | 2013-08-23 A | 2013-08-30 A | 44, 45, 41 | 100% |  |  |  | Systems | 48h | 48h |
| 44 | 1.2.22.5.7 | Test local install |  | 4d | 2013-08-05 A | 2013-08-08 A | 41, 40 | 100% |  |  |  | Marina | 32h | 32h |
| 45 | 1.2.22.5.8 | Test local upgrade |  | 10d | 2013-08-09 A | 2013-08-22 A | 44, 40 | 100% |  |  |  | Marina | 80h | 80h |
| 46 | 1.2.22.5.9 | **Resolve issues identified by QA** |  | 23d? | 2013-08-05 A | 2013-09-04 A |  | 100% |  |  |  |  | 192h | 192h |
| 47 | 1.2.22.5.9.1 | Fix CAINT-1290, CAINT-1327, CAINT-1328, CAINT-1329, CAINT-1331, CAINT-1332 |  | 20d | 2013-08-05 A | 2013-08-30 A | 41 | 100% |  |  |  | Abe | 160h | 160h |
| 48 | 1.2.22.5.9.2 | Smoke test the fixes |  | 3d | 2013-09-02 A | 2013-09-04 A | 47 | 100% |  |  |  | Marina | 24h | 24h |
| 49 | 1.2.22.5.9.3 | Re-run Section 508 Scan |  | 1d? | 2013-09-02 A | 2013-09-02 A | 47 | 100% |  |  |  | Shine | 8h | 8h |
| 50 | 1.2.22.5.10 | Create the Test Plan for STAGE and update the test report for QA |  | 3d | 2013-09-05 A | 2013-09-09 A | 41, 42, 43, 44, 46, 45 | 100% |  |  |  | Marina | 24h | 24h |
| 51 | 1.2.22.6 | Request approval to deploy to STAGE | milestone | 0d | 2013-09-09 A | 2013-09-09 A | 37 | 100% |  |  |  | Marina |  |  |
| 52 | 1.2.22.7 | Test Results Review and Reporting |  | 3d | 2013-09-10 A | 2013-09-12 A | 51 | 100% |  |  |  | QA* | 24h | 24h |
| 53 | 1.2.22.8 | Approval to deploy to STAGE | milestone | 0d | 2013-09-12 A | 2013-09-12 A | 52, 50 | 100% |  |  |  | QA* |  |  |
| 54 | 1.2.22.9 | Create release artifacts |  | 2d | 2013-09-13 | 2013-09-16 | 53 |  |  | 88d |  | Mike; Abe | 32h |  |
| 55 | 1.2.22.10 | Update installation documentation |  | 0.5d? | 2013-08-23 A | 2013-08-23 A | 44, 45 | 100% |  |  |  | Abe; Jill | 8h | 8h |

| ID | WBS | Task | Type | Duration | Start | Finish | Predecessors | Complete | Remaining | Total slack | Free slack | Constraint | Resources | Work | Actual work |
| --- | --- | --- | --- | --- | --- | --- | --- | --- | --- | --- | --- | --- | --- | --- | --- |
| 56 | 1.2.23 | **STAGE Tier** |  | 7d | 2013-09-12 A | 2013-09-23 |  | 20% | 5.6d | 83d |  |  |  | 80h | 16h |
| 57 | 1.2.23.1 | Request deployment to STAGE | milestone | 0d | 2013-09-12 A | 2013-09-12 A | 53 | 100% |  |  |  |  | Sichen |  |  |
| 58 | 1.2.23.2 | Deploy to STAGE |  | 2d | 2013-09-13 A | 2013-09-16 A | 57 | 100% |  |  |  |  | Systems* | 16h | 16h |
| 59 | 1.2.23.3 | Smoke test |  | 2d | 2013-09-17 | 2013-09-18 | 58 |  |  | 0d |  |  | Marina | 16h |  |
| 60 | 1.2.23.4 | Create QA Test Summary Report |  | 3d | 2013-09-19 | 2013-09-23 | 59 |  |  | 83d |  |  | Marina | 24h |  |
| 61 | 1.2.23.5 | Test Results Review and Reporting |  | 3d | 2013-09-19 | 2013-09-23 | 59 |  |  | 0d |  |  | QA* | 24h |  |
| 62 | 1.2.24 | **PRODUCTION** |  | 3d | 2013-09-23 | 2013-09-26 |  |  |  | 0d |  |  |  | 24h |  |
| 63 | 1.2.24.1 | Request deployment to PRODUCTION | milestone | 0d | 2013-09-23 | 2013-09-23 | 61, 53 |  |  | 0d |  |  | GQR |  |  |
| 64 | 1.2.24.2 | Deploy to PRODUCTION |  | 1d | 2013-09-24 | 2013-09-24 | 63 |  |  | 0d |  |  | Systems* | 8h |  |
| 65 | 1.2.24.3 | Update product landing page |  | 0.5d | 2013-09-25 | 2013-09-25 | 64 |  |  | 1.5d |  |  |  |  |  |
| 66 | 1.2.24.4 | QA smoke tests PRODUCTION |  | 2d | 2013-09-25 | 2013-09-26 | 64 |  |  | 0d |  |  | QA* | 16h |  |
| 67 | 1.2.25 | MILESTONE: RELEASE 1.4.1 | milestone | 0d | 2013-09-26 | 2013-09-26 | 62 |  |  | 0d |  | start no earlier than 2012-01-09 |  |  |  |
| 68 | 1.3 | **caIntegrator 1.4.2** |  | 250d? | 2012-12-03 A | 2013-11-15 |  | 37% | 157.42d? | 44d |  |  |  | 1576h | 594h |
| 69 | 1.3.1 | Support for 1.4.1 |  | 5d | 2013-04-25 | 2013-05-01 | 29 |  |  | 177d |  |  | Abe | 40h |  |
| 70 | 1.3.2 | **Development** |  | 214d | 2012-12-03 A | 2013-09-26 |  | 51% | 105.17d | 80d |  |  |  | 1136h | 594h |
| 71 | 1.3.2.1 | **Improve performance** |  | 89d | 2013-04-25 A | 2013-08-27 |  | 67% | 29.75d | 53d | 19d |  |  | 712h | 474h |
| 72 | 1.3.2.1.1 | Development |  | 79d | 2013-04-25 A | 2013-08-13 | 29 | 75% | 19.75d | 53d | 0d |  | Abe | 632h | 474h |
| 73 | 1.3.2.1.2 | QA |  | 10d | 2013-08-14 | 2013-08-27 | 72 |  |  | 44d |  |  | Marina | 80h |  |
| 74 | 1.3.2.2 | **Upgrade Tech Stack Components** |  | 24d | 2013-07-03 A | 2013-08-05 |  | 63% | 9d | 69d | 35d |  |  | 160h | 120h |
| 75 | 1.3.2.2.1 | Upgrade Spring |  | 10d | 2013-07-03 A | 2013-07-16 A |  | 100% |  |  |  | start no earlier than 2013-07-03 | Abe | 80h | 80h |
| 76 | 1.3.2.2.2 | Upgrade Struts & Tiles |  | 10d | 2013-07-17 A | 2013-07-30 | 75 | 50% | 5d | 69d | 0d |  | Abe | 80h | 40h |
| 77 | 1.3.2.2.3 | Upgrade CSM/UPT |  | 4d | 2013-07-31 | 2013-08-05 | 76 |  |  | 69d | 35d |  |  |  |  |
| 78 | 1.3.2.3 | **Address TRANSCEND Issues** |  | 30d | 2013-08-13 | 2013-09-23 |  |  |  | 34d | 0d |  |  | 240h |  |
| 79 | 1.3.2.3.1 | Development |  | 20d | 2013-08-13 | 2013-09-09 |  |  |  | 34d | 0d | start no earlier than 2013-08-13 | Abe | 160h |  |
| 80 | 1.3.2.3.2 | QA |  | 10d | 2013-09-10 | 2013-09-23 | 79 |  |  | 25d |  |  | Marina | 80h |  |
| 81 | 1.3.2.4 | MILESTONE: EPLC REVIEW (as needed) | milestone | 0d | 2012-12-03 | 2012-12-03 |  |  |  | 294d |  | start no earlier than 2012-01-09 |  |  |  |
| 82 | 1.3.2.5 | Cut release candidate | milestone | 0d | 2013-09-23 | 2013-09-23 | 71, 74, 77, 78 |  |  | 34d | 0d |  | Abe |  |  |
| 83 | 1.3.2.6 | Request approval to deploy to QA | milestone | 0d | 2013-09-23 | 2013-09-23 | 82 |  |  | 34d | 0d |  | Mike |  |  |
| 84 | 1.3.2.7 | Test Results Review and Reporting |  | 3d | 2013-09-24 | 2013-09-26 | 83 |  |  | 25d | 0d |  | QA* | 24h |  |
| 85 | 1.3.2.8 | Approval to deploy to QA | milestone | 0d | 2013-09-26 | 2013-09-26 | 84 |  |  | 25d | 0d |  | GQR |  |  |

| ID | WBS | Task | Type | Duration | Start | Finish | Predecessors | Total slack | Free slack | Constraint | Resources | Work |
| --- | --- | --- | --- | --- | --- | --- | --- | --- | --- | --- | --- | --- |
| 86 | 1.3.3 | **QA Tier** |  | 11d? | 2013-09-27 | 2013-10-11 |  | 34d |  |  |  | 184h |
| 87 | 1.3.3.1 | Deploy to QA tier |  | 1d? | 2013-09-27 | 2013-09-27 | 85 | 25d | 0d |  |  |  |
| 88 | 1.3.3.2 | Regression Testing on QA tier |  | 5d | 2013-09-30 | 2013-10-04 | 87 | 61d | 0d |  | Marina | 40h |
| 89 | 1.3.3.3 | Installer Testing |  | 4d | 2013-10-07 | 2013-10-10 | 88 | 61d |  |  | Marina | 32h |
| 90 | 1.3.3.4 | Section 508 testing on QA tier |  | 2d | 2013-09-30 | 2013-10-01 | 87 | 68d |  |  | Mike | 16h |
| 91 | 1.3.3.5 | Appscan on QA tier |  | 5d | 2013-09-30 | 2013-10-04 | 87 | 25d | 0d |  | Systems* | 40h |
| 92 | 1.3.3.6 | Request approval to deploy to STAGE | milestone | 0d | 2013-10-04 | 2013-10-04 | 91 | 34d | 0d |  | Marina |  |
| 93 | 1.3.3.7 | Test Results Review and Reporting |  | 3d | 2013-10-07 | 2013-10-09 | 92 | 25d | 0d |  | QA* | 24h |
| 94 | 1.3.3.8 | Approval to deploy to STAGE | milestone | 0d | 2013-10-09 | 2013-10-09 | 93 | 34d | 0d |  | QA* |  |
| 95 | 1.3.3.9 | Create release artifacts |  | 2d | 2013-10-10 | 2013-10-11 | 94 | 60d |  |  | Mike; Abe | 32h |
| 96 | 1.3.4 | **STAGE Tier** |  | 22d | 2013-10-09 | 2013-11-08 |  | 34d |  |  |  | 176h |
| 97 | 1.3.4.1 | Request deployment to STAGE | milestone | 0d | 2013-10-09 | 2013-10-09 | 94 | 25d | 0d |  | Marina; Mike |  |
| 98 | 1.3.4.2 | Deploy to STAGE |  | 3d | 2013-10-10 | 2013-10-14 | 97 | 25d | 0d |  | Systems* | 24h |
| 99 | 1.3.4.3 | Smoke test |  | 3d | 2013-10-15 | 2013-10-17 | 98 | 25d | 0d |  | Marina | 24h |
| 100 | 1.3.4.4 | Request security appscan | milestone | 0d | 2013-10-17 | 2013-10-17 | 99 | 34d | 0d |  | Marina; Mike |  |
| 101 | 1.3.4.5 | Run security appscan |  | 10d | 2013-10-18 | 2013-10-31 | 100 | 25d | 0d |  | Systems* | 80h |
| 102 | 1.3.4.6 | Create QA Test Summary Report |  | 3d | 2013-11-01 | 2013-11-05 | 101 | 25d | 0d |  | Marina | 24h |
| 103 | 1.3.4.7 | Request approval to deploy to PROD | milestone | 0d | 2013-11-05 | 2013-11-05 | 102 | 34d | 0d |  | Marina |  |
| 104 | 1.3.4.8 | Test Results Review and Reporting |  | 3d | 2013-11-06 | 2013-11-08 | 99, 103 | 25d | 0d |  | QA* | 24h |
| 105 | 1.3.4.9 | Approval to deploy to PROD | milestone | 0d | 2013-11-08 | 2013-11-08 | 104 | 25d | 0d |  | GQR |  |
| 106 | 1.3.5 | **PRODUCTION** |  | 5d? | 2013-11-11 | 2013-11-15 |  | 34d | 0d |  |  | 40h |
| 107 | 1.3.5.1 | Request deployment to PRODUCTION |  | 1d? | 2013-11-11 | 2013-11-11 | 105 | 25d | 0d |  | GQR | 8h |
| 108 | 1.3.5.2 | Deploy to PRODUCTION |  | 3d | 2013-11-12 | 2013-11-14 | 107 | 25d | 0d |  | Systems* | 24h |
| 109 | 1.3.5.3 | Update product landing page |  | 0.5d | 2013-11-15 | 2013-11-15 | 108 | 25.5d |  |  |  |  |
| 110 | 1.3.5.4 | QA smoke tests PRODUCTION |  | 1d | 2013-11-15 | 2013-11-15 | 108 | 25d |  |  | QA* | 8h |
| 111 | 1.3.6 | MILESTONE: RELEASE 1.4.2 | milestone | 0d | 2013-11-15 | 2013-11-15 | 106 | 34d | 0d | start no earlier than 2012-01-09 |  |  |

| ID | WBS | Task | Duration | Start | Finish | Predecessors | Total slack | Resources | Work |
| --- | --- | --- | --- | --- | --- | --- | --- | --- | --- |
| 112 | 2 | **User Support (as needed)** | 257d | 2013-01-23 | 2014-01-16 |  | 0d |  | 2504h |
| 113 | 2.1 | Support 1.4.0.1 | 223d | 2013-01-23 | 2013-11-29 | 6 | 25d | Abe | 1784h |
| 114 | 2.2 | Support 1.4.1 | 80d | 2013-09-27 | 2014-01-16 | 67 | 0d | Abe | 640h |
| 115 | 2.3 | Support 1.4.2 | 10d | 2013-11-18 | 2013-11-29 | 111 | 25d | Abe | 80h |
